# Cronograma de Actividades

Schedule from MS Project, 2016-08-08 to 2016-10-28.

## Calendars

- Estándar: Mon-Fri 09:00-13:00, 15:00-19:00; Sat-Sun off.

## Resources

| Resource |
| --- |
| Stephany |
| Miguel |
| Cristina |

## Schedule

| ID | WBS | Task | Duration | Start | Finish | Predecessors | Total slack | Free slack | Constraint | Resources | Work |
| --- | --- | --- | --- | --- | --- | --- | --- | --- | --- | --- | --- |
| 1 | 1 | **Trabajo Terminal II** | 60d | 2016-08-08 | 2016-10-28 |  | 0d |  |  |  | 1256h |
| 2 | 1.1 | **Administración de Datos (AD)** | 15d | 2016-08-08 | 2016-08-26 |  | 45d |  |  |  | 120h |
| 3 | 1.1.1 | Implementación Gestión de Consultas | 10d | 2016-08-08 | 2016-08-19 |  | 0d |  | start no earlier than 2016-08-08 | Stephany | 80h |
| 4 | 1.1.2 | Corrección reglas de negocio | 5d | 2016-08-22 | 2016-08-26 | 3 | 0d | 45d | start no earlier than 2016-08-22 | Stephany | 40h |
| 5 | 1.2 | **Análisis de Imágenes (AI)** | 60d | 2016-08-08 | 2016-10-28 |  | 0d |  |  |  | 1136h |
| 6 | 1.2.1 | **Pre-procesamiento** | 18d | 2016-08-08 | 2016-08-31 |  | 42d |  |  |  | 144h |
| 7 | 1.2.1.1 | Mejorar algoritmo pre-procesamiento | 10d | 2016-08-08 | 2016-08-19 |  | 0d |  | start no earlier than 2016-08-08 | Miguel | 80h |
| 8 | 1.2.1.2 | Documentación técnica | 5d | 2016-08-22 | 2016-08-26 | 7 | 0d | 45d | start no earlier than 2016-08-22 | Miguel | 40h |
| 9 | 1.2.1.3 | Integración al subsistema AD | 3d | 2016-08-29 | 2016-08-31 | 7 | 0d | 42d | start no earlier than 2016-08-29 | Stephany | 24h |
| 10 | 1.2.2 | **Segmentación** | 25d | 2016-08-08 | 2016-09-09 |  | 35d | 0d |  |  | 320h |
| 11 | 1.2.2.1 | Implementación segmentación red vascular | 10d | 2016-08-08 | 2016-08-19 |  | 0d |  | start no earlier than 2016-08-08 | Cristina | 80h |
| 12 | 1.2.2.2 | Implementación segmentación microaneurismas | 10d | 2016-08-22 | 2016-09-02 | 11 | 0d | 40d | start no earlier than 2016-08-22 | Cristina | 80h |
| 13 | 1.2.2.3 | Implementación segmentación exudados | 5d | 2016-08-29 | 2016-09-02 |  | 0d |  | start no earlier than 2016-08-29 | Miguel | 40h |
| 14 | 1.2.2.4 | Documentación técnica | 5d | 2016-09-05 | 2016-09-09 | 13 | 0d | 35d | start no earlier than 2016-09-05 | Cristina; Miguel | 80h |
| 15 | 1.2.2.5 | Integración al subsistema AD | 5d | 2016-09-05 | 2016-09-09 | 13 | 0d |  | start no earlier than 2016-09-05 | Stephany | 40h |
| 16 | 1.2.3 | **Extracción de atributos** | 13d | 2016-09-12 | 2016-09-28 |  | 22d | 0d |  |  | 152h |
| 17 | 1.2.3.1 | Extracción de atributos microaneurismas | 3d | 2016-09-12 | 2016-09-14 | 10 | 0d |  | start no earlier than 2016-09-12 | Cristina | 24h |
| 18 | 1.2.3.2 | Extracción de atributos exudados | 2d | 2016-09-15 | 2016-09-16 | 17 | 0d |  | start no earlier than 2016-09-15 | Cristina | 16h |
| 19 | 1.2.3.3 | Normalización de atributos | 2d | 2016-09-19 | 2016-09-20 | 18 | 0d |  | start no earlier than 2016-09-19 | Miguel | 16h |
| 20 | 1.2.3.4 | Selección de atributos | 3d | 2016-09-21 | 2016-09-23 | 19 | 0d |  | start no earlier than 2016-09-21 | Cristina | 24h |
| 21 | 1.2.3.5 | Documentación técnica | 3d | 2016-09-26 | 2016-09-28 | 20 | 0d | 22d | start no earlier than 2016-09-26 | Cristina; Miguel | 48h |
| 22 | 1.2.3.6 | Integración al subsistema AD | 3d | 2016-09-26 | 2016-09-28 | 20 | 0d | 22d | start no earlier than 2016-09-26 | Stephany | 24h |
| 23 | 1.2.4 | **Clasificación de atributos** | 21d | 2016-09-12 | 2016-10-10 |  | 14d |  |  |  | 248h |
| 24 | 1.2.4.1 | Investigación Algoritmos de Clasificación | 10d | 2016-09-12 | 2016-09-23 | 15 | 0d | 25d | start no earlier than 2016-09-12 | Stephany | 80h |
| 25 | 1.2.4.2 | Entrenamiento de la base de conocimientos microaneurismas | 3d | 2016-09-29 | 2016-10-03 | 16 | 0d | 19d | start no earlier than 2016-09-29 | Cristina | 24h |
| 26 | 1.2.4.3 | Entrenamiento de la base de conocimientos exudados | 3d | 2016-09-29 | 2016-10-03 | 16 | 0d | 19d | start no earlier than 2016-09-29 | Stephany | 24h |
| 27 | 1.2.4.4 | Implementación de algoritmo KNN | 5d | 2016-10-04 | 2016-10-10 |  | 0d | 14d | start no earlier than 2016-10-04 | Stephany | 40h |
| 28 | 1.2.4.5 | Implementación de memorias asociativas | 5d | 2016-10-04 | 2016-10-10 |  | 0d | 14d | start no earlier than 2016-10-04 | Cristina | 40h |
| 29 | 1.2.4.6 | Implementación de Suport Vector Machine | 5d | 2016-10-04 | 2016-10-10 |  | 0d | 14d | start no earlier than 2016-10-04 | Miguel | 40h |

| ID | WBS | Task | Duration | Start | Finish | Total slack | Free slack | Constraint | Resources | Work |
| --- | --- | --- | --- | --- | --- | --- | --- | --- | --- | --- |
| 30 | 1.2.5 | **Evaluación** | 9d | 2016-10-11 | 2016-10-21 | 5d |  |  |  | 216h |
| 31 | 1.2.5.1 | Comparación de métodos de clasificación | 6d | 2016-10-11 | 2016-10-18 | 8d |  | start no earlier than 2016-10-11 | Cristina; Miguel; Stephany | 144h |
| 32 | 1.2.5.2 | Documentación técnica | 3d | 2016-10-19 | 2016-10-21 | 5d |  | start no earlier than 2016-10-19 | Cristina; Miguel | 48h |
| 33 | 1.2.5.3 | Integración al subsistema AD del método seleccionado | 3d | 2016-10-19 | 2016-10-21 | 5d |  | start no earlier than 2016-10-19 | Stephany | 24h |
| 34 | 1.2.6 | **Resultados** | 5d | 2016-10-24 | 2016-10-28 | 0d |  |  |  | 56h |
| 35 | 1.2.6.1 | Obtención de pre-diagnóstico | 2d | 2016-10-24 | 2016-10-25 | 0d | 3d |  | Miguel | 16h |
| 36 | 1.2.6.2 | Generación de reporte | 1d | 2016-10-26 | 2016-10-26 | 0d | 2d | start no earlier than 2016-10-26 | Stephany | 8h |
| 37 | 1.2.6.3 | Documentación técnica | 2d | 2016-10-27 | 2016-10-28 | 0d |  | start no earlier than 2016-10-27 | Miguel | 16h |
| 38 | 1.2.6.4 | Integración al subsistema AD | 2d | 2016-10-27 | 2016-10-28 | 0d |  | start no earlier than 2016-10-27 | Stephany | 16h |
